# Aplicación software

Schedule from MS Project, 2024-06-03 to 2024-08-22, costs in €.

## Calendars

- Estándar: Mon-Fri 09:00-13:00, 15:00-19:00; Sat-Sun off.

## Resources

| Resource | Unit | Rate |
| --- | --- | --- |
| Analista |  | 45 |
| Diseñador |  | 35 |
| Programador |  | 30 |
| Director PL |  | 50 |
| Subdirector PL |  | 60 |
| CANTABRIA LAN |  | 100 |
| Servidor | ud | 7000 |
| PC | ud | 1300 |
| Cable UTC CAT5 | metro | 0.5 |

## Schedule

| ID | WBS | Task | Type | Duration | Start | Finish | Predecessors | Total slack | Free slack | Resources | Work | Cost |
| --- | --- | --- | --- | --- | --- | --- | --- | --- | --- | --- | --- | --- |
| 1 | 1 | **Análisis** |  | 18d | 2024-06-03 | 2024-06-26 |  | 5.75d | 0d |  | 144h | 6,480 |
| 2 | 1.1 | Refinamiento requisitos |  | 2w | 2024-06-03 | 2024-06-14 |  | 5.75d | 0d | Analista | 80h | 3,600 |
| 3 | 1.2 | Análisis funcional |  | 8d | 2024-06-17 | 2024-06-26 | 2 | 5.75d | 0d | Analista | 64h | 2,880 |
| 4 | 2 | Aprobación análisis | milestone | 0d | 2024-06-26 | 2024-06-26 | 3 | 40.5d |  | Director PL; Subdirector PL |  |  |
| 5 | 3 | **Diseño** |  | 17.75d | 2024-06-27 | 2024-07-22 | 1 | 5.75d |  |  | 432h | 15,760 |
| 6 | 3.1 | Arquitectura del sistema |  | 8d | 2024-06-27 | 2024-07-08 |  | 5.75d | 0d | Analista; Diseñador [200%] | 128h | 5,120 |
| 7 | 3.2 | Modelo de datos |  | 5d | 2024-07-09 | 2024-07-15 | 6 | 5.75d | 0d | Diseñador | 40h | 1,400 |
| 8 | 3.3 | **Diseño interfaces** |  | 6d | 2024-07-12 | 2024-07-22 | 7FS-2.5% | 5.75d |  |  | 264h | 9,240 |
| 9 | 3.3.1 | Int. Usuario |  | 2.25d | 2024-07-12 | 2024-07-16 |  | 14.83d | 0d | Diseñador [400%] | 72h | 2,520 |
| 10 | 3.3.2 | Int. Web |  | 6d | 2024-07-12 | 2024-07-22 |  | 5.75d | 0d | Diseñador [400%] | 192h | 6,720 |
| 11 | 4 | **Codificación** |  | 12.75d | 2024-07-16 | 2024-08-01 |  | 5.75d | 0d |  | 384h | 11,520 |
| 12 | 4.1 | Módulo A |  | 2d | 2024-07-17 | 2024-07-18 | 9 | 15.5d |  | Programador [500%] | 80h | 2,400 |
| 13 | 4.2 | Base de datos |  | 3d | 2024-07-16 | 2024-07-18 | 7 | 12.83d | 0d | Programador [200%] | 48h | 1,440 |
| 14 | 4.3 | Módulo B |  | 2.67d | 2024-07-19 | 2024-07-23 | 13, 9 | 12.83d |  | Programador [300%] | 64h | 1,920 |
| 15 | 4.4 | Web |  | 8d | 2024-07-22 | 2024-08-01 | 10 | 5.75d |  | Programador [300%] | 192h | 5,760 |
| 16 | 5 | Pruebas Soft |  | 4d | 2024-08-01 | 2024-08-07 | 11 | 5.75d |  | Diseñador; Programador [200%]; Analista [300%] | 96h | 3,520 |
| 17 | 6 | **Equipamiento** |  | 27.5d | 2024-07-09 | 2024-08-15 | 6 | 0d |  |  | 80h | 8,000 |
| 18 | 6.1 | Compra equipos |  | 3d | 2024-07-09 | 2024-07-11 |  | 9d |  |  |  |  |
| 19 | 6.2 | Instalación CPD |  | 2d | 2024-08-01 | 2024-08-05 | 18FS+3d | 7.5d | 0d | CANTABRIA LAN | 16h | 1,600 |
| 20 | 6.3 | Instalación cableado |  | 3d | 2024-08-01 | 2024-08-05 | 19SS | 7.5d | 0d |  |  |  |
| 21 | 6.4 | Certificación equipos | milestone | 0d | 2024-08-05 | 2024-08-05 | 20 | 7.5d |  | CANTABRIA LAN |  |  |
| 22 | 6.5 | Instalación clientes |  | 8d | 2024-08-01 | 2024-08-15 | 18FS+5d | 0d |  | CANTABRIA LAN | 64h | 6,400 |
| 23 | 7 | Pruebas de integración |  | 6d | 2024-08-15 | 2024-08-22 | 16, 17 | 0d |  | CANTABRIA LAN; Analista; Diseñador; Programador | 128h | 6,720 |
| 24 | 8 | Firma acta de recepción | milestone | 0d | 2024-08-22 | 2024-08-22 | 23 | 0d |  |  |  |  |
