# API Park&Go

Schedule from MS Project, 2024-06-03 to 2025-07-30, costs in €.

## Calendars

- Estándar: Mon-Fri 09:00-13:00, 15:00-19:00; Sat-Sun off.

## Resources

| Resource | Rate |
| --- | --- |
| Diseñador | 35 |
| Programador | 30 |
| Analista | 45 |
| Tester | 30 |

## Schedule

| ID | WBS | Task | Type | Duration | Start | Finish | Predecessors | Total slack | Free slack | Resources | Work | Cost |
| --- | --- | --- | --- | --- | --- | --- | --- | --- | --- | --- | --- | --- |
| 1 | 1 | **Aplicación Móvil** |  | 200.65d | 2024-06-03 | 2025-03-10 |  | 0d |  |  | 2224h | 67,280 |
| 2 | 1.1 | **Diseño de Interfaz de Usuario** |  | 18d | 2024-06-03 | 2024-06-26 |  | 61.5d |  |  | 64h | 2,480 |
| 3 | 1.1.1 | Revisión de requisitos y especificaciones de diseño |  | 3d | 2024-06-03 | 2024-06-05 |  | 61.5d | 0d | Analista | 24h | 1,080 |
| 4 | 1.1.2 | Creación de wireframes y prototipos interactivos |  | 5d | 2024-06-20 | 2024-06-26 | 3 | 61.5d | 0d | Diseñador | 40h | 1,400 |
| 5 | 1.1.3 | Aprobación diseño | milestone | 0d | 2024-06-26 | 2024-06-26 | 4 | 182.65d |  |  |  |  |
| 6 | 1.2 | **Desarrollo del Frontend** |  | 28d | 2024-06-25 | 2024-08-02 |  | 61.5d |  |  | 664h | 19,920 |
| 7 | 1.2.1 | Configuración del entorno de desarrollo Flutter |  | 3d | 2024-06-25 | 2024-06-28 | 4FS-2.5% | 61.5d | 0d | Programador | 24h | 720 |
| 8 | 1.2.2 | Implementación de las vistas de la aplicación |  | 20d | 2024-06-28 | 2024-07-26 | 7 | 66.5d |  | Programador | 160h | 4,800 |
| 9 | 1.2.3 | Desarrollo de la lógica de la aplicación |  | 25d | 2024-06-28 | 2024-08-02 | 7 | 61.5d | 0d | Programador [200%] | 400h | 12,000 |
| 10 | 1.2.4 | Integración de componentes interactivos |  | 10d | 2024-07-19 | 2024-08-02 | 9FF | 61.5d |  | Programador | 80h | 2,400 |
| 11 | 1.3 | **Integración de Funcionalidades** |  | 35d | 2024-10-29 | 2024-12-17 | 6, 27 | 0d |  |  | 680h | 20,400 |
| 12 | 1.3.1 | Implementación de la autenticación de usuarios |  | 5d | 2024-10-29 | 2024-11-05 |  | 0d |  | Programador | 40h | 1,200 |
| 13 | 1.3.2 | Desarrollo de las funciones específicas según los requisitos |  | 30d | 2024-10-29 | 2024-12-10 | 12SS | 0d |  | Programador [200%] | 480h | 14,400 |
| 14 | 1.3.3 | Pruebas unitarias y de integración para asegurar la funcionalidad adecuada |  | 10d | 2024-12-03 | 2024-12-17 | 13FS-5d | 0d |  | Programador [200%] | 160h | 4,800 |
| 15 | 1.4 | **Optimización y Pruebas** |  | 36.4d | 2024-12-17 | 2025-02-05 | 11 | 0d |  |  | 312h | 9,360 |
| 16 | 1.4.1 | Optimización del rendimiento de la aplicación |  | 8d | 2024-12-17 | 2024-12-27 |  | 0d |  | Programador | 64h | 1,920 |
| 17 | 1.4.2 | Depuración y resolución de problemas |  | 13d | 2024-12-27 | 2025-01-15 | 16 | 0d |  | Programador | 104h | 3,120 |
| 18 | 1.4.3 | Pruebas de compatibilidad con diferentes dispositivos y resoluciones de pantalla |  | 10d | 2025-01-10 | 2025-01-24 | 17FS-2% | 0d |  | Programador | 80h | 2,400 |
| 19 | 1.4.4 | Pruebas de usabilidad para garantizar una experiencia de usuario fluida |  | 8d | 2025-01-24 | 2025-02-05 | 18 | 0d |  | Programador | 64h | 1,920 |
| 20 | 1.5 | **Implementación en Producción** |  | 8d | 2025-02-05 | 2025-02-17 | 15 | 0d |  |  | 104h | 3,120 |
| 21 | 1.5.1 | Preparación y configuración de entornos de producción |  | 5d | 2025-02-05 | 2025-02-12 |  | 0d |  | Programador [200%] | 80h | 2,400 |
| 22 | 1.5.2 | Despliegue de la aplicación en tiendas de aplicaciones (App Store y Google Play) |  | 3d | 2025-02-12 | 2025-02-17 | 21 | 0d |  | Programador | 24h | 720 |
| 23 | 1.6 | **Fase de Pruebas** |  | 15d | 2025-02-17 | 2025-03-10 | 20 | 0d |  |  | 400h | 12,000 |
| 24 | 1.6.1 | Seguimiento de las pruebas |  | 15d | 2025-02-17 | 2025-03-10 |  | 0d |  | Programador; Tester | 240h | 7,200 |
| 25 | 1.6.2 | Ejecución de los cambios pertinentes |  | 10d | 2025-02-17 | 2025-03-03 | 24SS | 5d |  | Programador [200%] | 160h | 4,800 |
| 26 | 1.7 | Firma acta de recepción | milestone | 0d | 2025-03-10 | 2025-03-10 | 23 | 0d |  |  |  |  |

| ID | WBS | Task | Type | Duration | Start | Finish | Predecessors | Total slack | Free slack | Resources | Work | Cost |
| --- | --- | --- | --- | --- | --- | --- | --- | --- | --- | --- | --- | --- |
| 27 | 2 | **Servidor AWS Cloud** |  | 106.25d | 2024-06-03 | 2024-10-29 |  | 0d |  |  | 1620h | 50,240 |
| 28 | 2.1 | **Investigación y Diseño** |  | 13d | 2024-06-03 | 2024-06-19 |  | 0d |  |  | 168h | 6,520 |
| 29 | 2.1.1 | Identificación de los requisitos del servicio que satisfagan las necesidades de la aplicación móvil |  | 5d | 2024-06-03 | 2024-06-07 |  | 0d |  | Analista; Diseñador | 80h | 3,200 |
| 30 | 2.1.2 | Investigación y selección de los servicios AWS adecuados para satisfacer las necesidades de la aplicación |  | 3d | 2024-06-10 | 2024-06-12 | 29 | 0d |  | Analista; Diseñador | 48h | 1,920 |
| 31 | 2.1.3 | Diseño de la arquitectura con los servicios AWS |  | 5d | 2024-06-13 | 2024-06-19 | 30 | 0d |  | Diseñador | 40h | 1,400 |
| 32 | 2.2 | **Implementación del Servidor** |  | 93.25d | 2024-06-20 | 2024-10-29 |  | 0d |  |  | 1348h | 40,440 |
| 33 | 2.2.1 | Configuración de la Infraestructura AWS |  | 5d | 2024-06-20 | 2024-06-26 | 31 | 0d |  | Programador | 40h | 1,200 |
| 34 | 2.2.2 | **Integración con la Aplicación Móvil** |  | 77.25d | 2024-06-27 | 2024-10-14 |  | 0d |  |  | 1196h | 35,880 |
| 35 | 2.2.2.1 | Desarrollo de la API que permita la comunicación entre la aplicación móvil y el servidor |  | 69.75d | 2024-06-27 | 2024-10-02 | 33 | 0d |  | Programador [200%] | 1116h | 33,480 |
| 36 | 2.2.2.2 | Solución de errores identificados durante la fase de integración |  | 2.5d | 2024-10-02 | 2024-10-07 | 35 | 0d |  | Programador [200%] | 40h | 1,200 |
| 37 | 2.2.2.3 | Fase de optimización y rendimiento |  | 5d | 2024-10-07 | 2024-10-14 | 36 | 0d |  | Programador | 40h | 1,200 |
| 38 | 2.2.3 | Despliegue de la API |  | 3d | 2024-10-14 | 2024-10-17 | 34 | 0d |  | Programador [200%] | 48h | 1,440 |
| 39 | 2.2.4 | Implementacion de medidas de seguridad |  | 8d | 2024-10-17 | 2024-10-29 | 38 | 0d |  | Programador | 64h | 1,920 |
| 40 | 2.3 | **Fase de pruebas y ajustes finales** |  | 9d | 2024-10-14 | 2024-10-25 |  | 2d |  |  | 104h | 3,280 |
| 41 | 2.3.1 | Realización de pruebas de carga y estrés |  | 4d | 2024-10-14 | 2024-10-18 | 37 | 2d | 0d | Diseñador; Programador | 64h | 2,080 |
| 42 | 2.3.2 | Ajustes y optimizaciones finales |  | 5d | 2024-10-18 | 2024-10-25 | 41 | 2d | 0d | Programador | 40h | 1,200 |
| 43 | 2.4 | Firma Acta de Aceptación de Software | milestone | 0d | 2024-10-25 | 2024-10-25 | 42 | 2d |  |  |  |  |
| 44 | 3 | **Hub Zigbee** |  | 158.25d | 2024-06-03 | 2025-01-09 |  | 143.9d |  |  | 1224h | 36,720 |
| 45 | 3.1 | **Desarrollo del Software HUB** |  | 23d | 2024-06-03 | 2024-07-03 |  | 227.15d | 83.25d |  | 344h | 10,320 |
| 46 | 3.1.1 | Configuración del entorno de desarrollo para el software HUB |  | 3d | 2024-06-03 | 2024-06-05 |  | 227.15d | 0d | Programador | 24h | 720 |
| 47 | 3.1.2 | Desarrollo de la lógica de comunicación con dispositivos de usuarios |  | 20d | 2024-06-06 | 2024-07-03 | 46 | 227.15d |  | Programador [200%] | 320h | 9,600 |
| 48 | 3.2 | **Integración de Funcionalidades** |  | 32d | 2024-10-29 | 2024-12-12 | 45 | 143.9d | 0d |  | 560h | 16,800 |
| 49 | 3.2.1 | Desarrollo de funcionalidades |  | 30d | 2024-10-29 | 2024-12-10 | 27 | 143.9d | 0d | Programador [200%] | 480h | 14,400 |
| 50 | 3.2.2 | Pruebas unitarias y de integración para asegurar la funcionalidad adecuada |  | 5d | 2024-12-05 | 2024-12-12 | 49FS-3d | 143.9d |  | Tester; Programador | 80h | 2,400 |

| ID | WBS | Task | Type | Duration | Start | Finish | Predecessors | Total slack | Free slack | Resources | Work | Cost |
| --- | --- | --- | --- | --- | --- | --- | --- | --- | --- | --- | --- | --- |
| 51 | 3.3 | **Optimización y Pruebas** |  | 20d | 2024-12-12 | 2025-01-09 | 48 | 143.9d |  |  | 320h | 9,600 |
| 52 | 3.3.1 | Optimización del rendimiento del software HUB |  | 10d | 2024-12-12 | 2024-12-26 |  | 143.9d | 0d | Programador; Tester | 160h | 4,800 |
| 53 | 3.3.2 | Depuración y resolución de problemas |  | 10d | 2024-12-26 | 2025-01-09 | 52 | 143.9d | 0d | Programador; Tester | 160h | 4,800 |
| 54 | 3.4 | Firma del acta de aceptación del software | milestone | 0d | 2025-01-09 | 2025-01-09 | 53 | 143.9d |  |  |  |  |
| 55 | 4 | **Validación Piloto del Sistema** |  | 101.5d | 2025-03-10 | 2025-07-30 | 1 | 0d |  |  | 700h | 23,100 |
| 56 | 4.1 | Realización de Pruebas con Parkings Reales |  | 90d | 2025-03-10 | 2025-07-14 |  | 0d |  |  |  |  |
| 57 | 4.2 | Ejecución de los cambios pertinentes |  | 70d | 2025-04-23 | 2025-07-30 | 56SS+3.5% | 0d |  | Programador; Analista [25%] | 700h | 23,100 |
